# UTP-GPS-ALARM

Schedule from MS Project, 2015-09-01 to 2015-11-19, A marks actual dates.

## Calendars

- Calendario UTP: Mon-Sat 09:00-13:00, 15:00-19:00; Sun off. Exceptions (off unless hours are given): 2015-10-08 (Combate de Angamos), 2015-11-01 (Dia de los Muertos).

## Resources

| Resource |
| --- |
| Edwar |
| Julio |
| Roger |
| Profesor |

## Schedule

| ID | WBS | Task | Type | Duration | Start | Finish | Predecessors | Complete | Remaining | Actual start | Actual finish | Total slack | Constraint | Resources | Work | Actual work |
| --- | --- | --- | --- | --- | --- | --- | --- | --- | --- | --- | --- | --- | --- | --- | --- | --- |
| 1 | 1 | **Proyecto UTP-GPS-ALARM** |  | 68.12d | 2015-09-01 A | 2015-11-19 |  | 22% | 53.02d |  |  |  |  | Edwar; Julio; Profesor; Roger | 29987.2h | 2594.72h |
| 2 | 1.1 | **Proceso de Gestion** |  | 68d | 2015-09-01 A | 2015-11-19 |  | 47% | 36.08d |  |  | 0d |  | Edwar; Julio; Roger; Profesor | 13970.2h | 2174.97h |
| 3 | 1.1.1 | **Inicio** |  | 68d | 2015-09-01 A | 2015-11-19 |  | 25% | 51.03d |  |  |  |  | Edwar; Julio; Roger | 3264h | 413.26h |
| 4 | 1.1.1.1 | Revision de la Metodologia de Trabajo |  | 68d | 2015-09-01 A | 2015-11-19 |  | 25% | 51.03d |  |  | 0d | finish no earlier than 2015-11-19 | Edwar; Julio; Roger | 1632h | 407.25h |
| 5 | 1.1.2 | **Planificacion** |  | 68d | 2015-09-01 A | 2015-11-19 |  | 83% | 11.72d |  |  | 0d |  | Edwar; Julio; Profesor; Roger | 5644.24h | 1371.71h |
| 6 | 1.1.2.1 | **Plan del Proyecto** |  | 11d | 2015-09-08 | 2015-09-19 | 3 | 95% | 0.55d | 2015-09-01 |  |  |  | Edwar; Julio; Roger | 1408.24h | 1151.71h |
| 7 | 1.1.2.1.1 | **Elaboracion de Plan de Proyecto** |  | 18d | 2015-09-01 A | 2015-09-21 |  | 93% | 1.17d |  |  |  |  | Edwar; Julio; Roger | 981h | 777.75h |
| 8 | 1.1.2.1.1.1 | Definir Nombre del Proyecto |  | 1d | 2015-09-01 A | 2015-09-01 A |  | 100% |  |  |  |  |  | Edwar; Julio; Roger | 24h | 24h |
| 9 | 1.1.2.1.1.2 | Definir Objetivos de Proyecto |  | 1d | 2015-09-02 A | 2015-09-02 A |  | 100% |  |  |  |  |  | Edwar; Julio; Roger | 24h | 24h |
| 10 | 1.1.2.1.1.3 | Definicion de Entregables , Ajuste de Lista de Requerimientos | manual | 1d | 2015-09-04 A | 2015-09-04 A |  | 100% |  |  |  |  |  | Edwar; Julio; Roger | 24h | 24h |
| 11 | 1.1.2.1.1.4 | Elaboracion de Cronograma Detallado | manual | 13d | 2015-09-04 A | 2015-09-18 A |  | 100% |  |  |  |  |  | Roger | 105h | 105h |
| 12 | 1.1.2.1.1.5 | Gestion de Comunicaciones |  | 1d | 2015-09-05 A | 2015-09-05 A |  | 100% |  |  |  |  | finish no earlier than 2015-09-01 | Roger; Julio; Edwar | 24h | 24h |
| 13 | 1.1.2.1.1.6 | Necesidades del Proyecto | manual | 2d | 2015-09-05 A | 2015-09-07 A |  | 100% |  |  |  |  |  | Roger; Julio; Edwar | 51h | 51h |
| 14 | 1.1.2.1.1.7 | Lista de Requerimientos | manual | 3d | 2015-09-09 A | 2015-09-11 A |  | 100% |  |  |  |  |  | Edwar; Julio; Roger | 48h | 48h |
| 15 | 1.1.2.1.1.8 | Identificacion de Riesgos del Proyecto | manual | 6.88d | 2015-09-07 A | 2015-09-19 |  | 75% | 1.72d |  |  |  |  | Roger | 56h | 41.25h |
| 16 | 1.1.2.1.1.9 | Elaborar Documento de Riesgos del Proyecto |  | 1d | 2015-09-19 A | 2015-09-19 A |  | 100% |  |  |  |  | start no earlier than 2015-09-14 | Roger | 8h | 8h |
| 17 | 1.1.2.1.1.10 | Elaborar Documento Plan de Proyecto |  | 10.88d | 2015-09-08 A | 2015-09-19 |  | 91% | 1d |  |  | 51.12d | finish no earlier than 2015-09-19 | Roger; Edwar | 174h | 158h |
| 18 | 1.1.2.1.1.11 | Traspaso de Informacion |  | 1d | 2015-09-21 A | 2015-09-21 A | 16 | 100% |  |  |  |  |  | Edwar | 8h | 8h |
| 19 | 1.1.2.1.2 | **Revision Interna de Proyecto** |  | 2d | 2015-09-19 A | 2015-09-21 |  | 100% |  |  | 2015-10-05 |  |  |  | 128.24h | 128.24h |
| 20 | 1.1.2.1.2.1 | Revision de Plan de Proyecto por el equipo del Proyecto |  | 1d | 2015-09-19 A | 2015-09-19 A |  | 100% |  |  |  |  | finish no earlier than 2015-09-12 | Edwar; Julio; Roger | 8.6h | 8.6h |
| 21 | 1.1.2.1.2.2 | Ajustes al Plan de Proyecto |  | 0.88d | 2015-09-19 A | 2015-09-19 A | 20 | 100% |  |  |  |  | finish no earlier than 2015-09-19 | Edwar; Julio; Roger | 7.64h | 7.64h |
| 22 | 1.1.2.1.2.3 | Elaborar Acta de Revision de Documento |  | 1d | 2015-09-19 A | 2015-09-19 A | 24, 21 | 100% |  |  |  |  |  | Roger | 8h | 8h |
| 23 | 1.1.2.1.2.4 | Traspaso de Informacion |  | 1d | 2015-09-21 A | 2015-09-21 A | 22 | 100% |  |  |  |  | start no earlier than 2015-09-21 | Edwar | 8h | 8h |
| 24 | 1.1.2.1.2.5 | **Aseguramiento de la Calidad de Proyecto** |  | 6d | 2015-09-29 A | 2015-10-05 A |  | 100% |  |  |  |  |  | Julio | 96h | 96h |
| 25 | 1.1.2.1.2.5.1 | Preparar Actividades de QA |  | 1d | 2015-09-29 A | 2015-09-29 A |  | 100% |  |  |  |  |  | Julio | 8h | 8h |
| 26 | 1.1.2.1.2.5.2 | Ejecutar la Revision de QA-Procesos |  | 1d | 2015-09-30 A | 2015-09-30 A | 25 | 100% |  |  |  |  |  | Julio | 8h | 8h |
| 27 | 1.1.2.1.2.5.3 | Levantar la No Conformidad |  | 1d | 2015-10-01 A | 2015-10-01 A | 26 | 100% |  |  |  |  |  | Julio | 8h | 8h |
| 28 | 1.1.2.1.2.5.4 | Realizar el seguimiento |  | 1d | 2015-10-02 A | 2015-10-02 A | 27 | 100% |  |  |  |  |  | Julio | 8h | 8h |
| 29 | 1.1.2.1.2.5.5 | Elaborar e informar las actividades de QA a Jefe de Proyecto |  | 1d | 2015-10-03 A | 2015-10-03 A | 28 | 100% |  |  |  |  |  | Julio | 8h | 8h |
| 30 | 1.1.2.1.2.5.6 | Traspaso de Informacion |  | 1d | 2015-10-05 A | 2015-10-05 A | 29 | 100% |  |  |  |  |  | Edwar | 8h | 8h |

| ID | WBS | Task | Type | Duration | Start | Finish | Predecessors | Complete | Remaining | Total slack | Free slack | Constraint | Resources | Work | Actual work |
| --- | --- | --- | --- | --- | --- | --- | --- | --- | --- | --- | --- | --- | --- | --- | --- |
| 31 | 1.1.2.1.3 | **Gestion de la Configuracion** |  | 2d | 2015-09-04 A | 2015-09-05 A |  | 100% |  |  |  |  | Edwar | 36h | 36h |
| 32 | 1.1.2.1.3.1 | Establecer Repositorio de Datos | manual | 2d | 2015-09-04 A | 2015-09-05 A |  | 100% |  |  |  | finish no earlier than 2015-09-11 | Edwar | 16h | 16h |
| 33 | 1.1.2.1.3.2 | Asignar Gestor de Configuracion |  | 0.5d | 2015-09-05 A | 2015-09-05 A | 32 | 100% |  |  |  | finish no earlier than 2015-09-05 | Roger | 4h | 4h |
| 34 | 1.1.2.2 | **Revision por el Cliente (Profesor)** |  | 3d | 2015-09-15 A | 2015-09-17 |  | 99% | 0d |  |  |  | Edwar; Julio; Profesor; Roger | 220h | 188h |
| 35 | 1.1.2.2.1 | Entrega de Plan de Proyecto |  | 1d | 2015-09-15 A | 2015-09-15 A |  | 100% |  |  |  | start no earlier than 2015-09-10 | Edwar; Julio; Roger | 24h | 24h |
| 36 | 1.1.2.2.2 | Reunion Conjunta de Revision del Plan de Proyecto |  | 2.88d | 2015-09-15 A | 2015-09-17 A | 35 | 100% |  |  |  | finish no earlier than 2015-09-17 | Edwar; Julio; Profesor; Roger | 92h | 92h |
| 37 | 1.1.2.2.3 | Traspaso de Informacion |  | 1d | 2015-09-19 A | 2015-09-19 A | 36 | 100% |  |  |  |  | Edwar | 8h | 8h |
| 38 | 1.1.2.3 | **Kick Off Meeting Externos** |  | 48d | 2015-09-24 | 2015-11-19 |  |  |  | -0.12d | 0d |  | Edwar; Julio; Profesor; Roger | 1840h |  |
| 39 | 1.1.2.3.1 | **1 Presentacion del Proyecto** |  | 2d | 2015-09-24 | 2015-09-25 |  |  |  |  |  |  | Edwar; Julio; Roger | 112h |  |
| 40 | 1.1.2.3.1.1 | Revision de Entregables de Area de Proceso PP-PMC |  | 1d | 2015-09-24 | 2015-09-24 |  |  |  | 47d |  | start no earlier than 2015-09-24 | Edwar; Julio; Roger | 24h |  |
| 41 | 1.1.2.3.1.2 | Acta de Reunion con acuerdos tomados |  | 1d | 2015-09-24 | 2015-09-24 |  |  |  | -0.12d | 0d | start no earlier than 2015-09-24 | Edwar; Julio; Profesor; Roger | 32h |  |
| 42 | 1.1.2.3.1.3 | Traspaso de Informacion |  | 1d | 2015-09-25 | 2015-09-25 | 41 |  |  | -0.12d | 0d |  | Edwar | 8h |  |
| 43 | 1.1.2.3.2 | **2 Presentacion del Proyecto** |  | 1d | 2015-10-22 | 2015-10-22 |  |  |  |  |  |  | Edwar; Julio; Roger | 96h |  |
| 44 | 1.1.2.3.2.1 | Kick Off Meeting con Profesor |  | 1d | 2015-10-22 | 2015-10-22 |  |  |  | -1.12d | 0d |  | Edwar; Julio; Profesor; Roger | 32h |  |
| 45 | 1.1.2.3.2.2 | Acta de Reunion con acuerdos tomados |  | 1d | 2015-10-23 | 2015-10-23 | 44 |  |  | -1.12d | 0d |  | Edwar; Julio; Profesor; Roger | 32h |  |
| 46 | 1.1.2.3.2.3 | Traspaso de Informacion |  | 1d | 2015-10-22 | 2015-10-22 |  |  |  | -0.12d | 0d |  | Edwar | 8h |  |
| 47 | 1.1.2.3.3 | **3 Presentacion del Proyecto** |  | 1d | 2015-11-19 | 2015-11-19 |  |  |  |  |  |  | Edwar; Julio; Roger | 96h |  |
| 48 | 1.1.2.3.3.1 | Kick Off Meeting con Profesor |  | 1d | 2015-11-19 | 2015-11-19 |  |  |  | -0.12d | 0d |  | Edwar; Julio; Profesor; Roger | 32h |  |
| 49 | 1.1.2.3.3.2 | Acta de Reunion con acuerdos tomados |  | 1d | 2015-11-19 | 2015-11-19 |  |  |  | 0d |  | start no earlier than 2015-11-19 | Edwar; Julio; Profesor; Roger | 32h |  |
| 50 | 1.1.2.3.3.3 | Traspaso de Informacion |  | 1d | 2015-11-18 | 2015-11-19 |  |  |  | 0.12d |  | finish no earlier than 2015-11-19 | Edwar | 8h |  |
| 51 | 1.1.3 | **Asignacion,Ejecucion, Seguimiento y Control** |  | 62d | 2015-09-08 A | 2015-11-19 |  | 32% | 42.21d |  |  |  | Edwar; Julio; Roger | 2824h | 384h |
| 52 | 1.1.3.1 | **Desarrollo del Area de Proceso PP- PPMC** |  | 12d | 2015-09-08 A | 2015-09-21 A |  | 100% |  |  |  |  | Edwar; Roger | 360h | 360h |
| 53 | 1.1.3.1.1 | Elaborar Plantilla de Reunion Quincenal |  | 1d | 2015-09-08 A | 2015-09-08 A |  | 100% |  |  |  |  | Roger | 8h | 8h |
| 54 | 1.1.3.1.2 | Elaborar Plantilla de Gestion de Riesgos |  | 1d | 2015-09-09 A | 2015-09-09 A | 53 | 100% |  |  |  |  | Roger | 8h | 8h |
| 55 | 1.1.3.1.3 | Elaborar Plantilla de Informe de Actividades Quincenales |  | 2d | 2015-09-10 A | 2015-09-11 A | 54 | 100% |  |  |  |  | Roger | 16h | 16h |
| 56 | 1.1.3.1.4 | Elaborar Plantillas de Actas de Reunion Quincenal |  | 1d | 2015-09-11 A | 2015-09-11 A | 55 | 100% |  |  |  |  | Roger | 8h | 8h |
| 57 | 1.1.3.1.5 | Elaborar Plantilla CheckList de Agenda a Reuniones Quincenales |  | 1d | 2015-09-12 A | 2015-09-12 A | 56 | 100% |  |  |  |  | Roger | 8h | 8h |
| 58 | 1.1.3.1.6 | Elaborar Formato de Aceptacion de Entregables |  | 2d | 2015-09-12 A | 2015-09-14 A | 57 | 100% |  |  |  |  | Roger | 16h | 16h |
| 59 | 1.1.3.1.7 | Elaborar Documento Gestion de Procesos PP-PMC |  | 6d | 2015-09-14 A | 2015-09-19 A | 58 | 100% |  |  |  |  | Edwar; Roger | 96h | 96h |
| 60 | 1.1.3.1.8 | Traspaso de Informacion |  | 1d | 2015-09-21 A | 2015-09-21 A |  | 100% |  |  |  | start no earlier than 2015-09-21 | Edwar | 8h | 8h |

| ID | WBS | Task | Duration | Start | Finish | Total slack | Resources | Work |
| --- | --- | --- | --- | --- | --- | --- | --- | --- |
| 61 | 1.1.3.2 | **Desarrollo del Area de Proceso REQM** | 10d | 2015-09-29 | 2015-10-10 |  | Edwar; Julio; Roger | 240h |
| 62 | 1.1.3.2.1 | Elaborar Formato Acta de Reunion con Cliente | 1d? | 2015-09-29 | 2015-09-29 | 8.88d |  |  |
| 63 | 1.1.3.2.2 | Elaborar Formato de Solicitud a Cambios a Requerimientos | 1d? | 2015-09-29 | 2015-09-29 | 8.88d |  |  |
| 64 | 1.1.3.2.3 | Elaborar Matriz de Trazabilidad de Requerimientos | 1d? | 2015-09-29 | 2015-09-29 | 8.88d |  |  |
| 65 | 1.1.3.2.4 | Elaborar Formato de Registro de Cambios a Requerimientos | 1d? | 2015-09-29 | 2015-09-29 | 8.88d |  |  |
| 66 | 1.1.3.2.5 | Elaborar Documento Gestion de Requerimientos | 1d? | 2015-09-29 | 2015-09-29 | 8.88d |  |  |
| 67 | 1.1.3.2.6 | Traspaso de Informacion | 1d? | 2015-09-29 | 2015-09-29 | 8.88d |  |  |
| 68 | 1.1.3.3 | **Desarrollo del Area de Proceso PPQA** | 5d | 2015-09-29 | 2015-10-03 |  | Edwar; Julio | 80h |
| 69 | 1.1.3.3.1 | Elaborar Matriz Seguimiento Proyectos Internos PQA | 1d? | 2015-09-29 | 2015-09-29 | 3.88d |  |  |
| 70 | 1.1.3.3.2 | Elaborar Metricas del Proyecto | 1d? | 2015-09-29 | 2015-09-29 | 3.88d |  |  |
| 71 | 1.1.3.3.3 | Elaborar Tablero de Metricas de Servicio | 1d? | 2015-09-29 | 2015-09-29 | 3.88d |  |  |
| 72 | 1.1.3.3.4 | Elaborar Tablero de Metricas de la Coordinacion | 1d? | 2015-09-29 | 2015-09-29 | 3.88d |  |  |
| 73 | 1.1.3.3.5 | Elaborar Documento de Proceso de Aseguramiento de la Calidad | 1d? | 2015-09-29 | 2015-09-29 | 3.88d |  |  |
| 74 | 1.1.3.3.6 | Traspaso de Informacion | 1d? | 2015-09-29 | 2015-09-29 | 3.88d |  |  |
| 75 | 1.1.3.4 | **Desarrollo del Area de Proceso MA** | 13d | 2015-10-16 | 2015-10-30 |  | Edwar; Julio; Roger | 312h |
| 76 | 1.1.3.4.1 | Elaborar Ficha de Metricas | 1d? | 2015-10-16 | 2015-10-16 | 11.88d |  |  |
| 77 | 1.1.3.4.2 | Elaborar Documento Volatilidad de Requirimientos | 1d? | 2015-10-16 | 2015-10-16 | 11.88d |  |  |
| 78 | 1.1.3.4.3 | Elaborar Plantilla Ficha de Indicados en blanco | 1d? | 2015-10-16 | 2015-10-16 | 11.88d |  |  |
| 79 | 1.1.3.4.4 | Elaborar Plantilla Ficha Indicador Instructivo | 1d? | 2015-10-16 | 2015-10-16 | 11.88d |  |  |
| 80 | 1.1.3.4.5 | Elaborar Documento de Proceso de Medidion MA | 1d? | 2015-10-16 | 2015-10-16 | 11.88d |  |  |
| 81 | 1.1.3.4.6 | Traspaso de Informacion | 1d? | 2015-10-16 | 2015-10-16 | 11.88d |  |  |
| 82 | 1.1.3.5 | **Desarrollo del Area de Proceso GC** | 15d | 2015-11-03 | 2015-11-19 |  | Edwar | 120h |
| 83 | 1.1.3.5.1 | Elaborar Registro de Items de Configuracion | 1d? | 2015-11-03 | 2015-11-03 | 13.88d |  |  |
| 84 | 1.1.3.5.2 | Elaborar Formato de Solicitud de Accesos | 1d? | 2015-11-03 | 2015-11-03 | 13.88d |  |  |
| 85 | 1.1.3.5.3 | Elaborar Documento de Proceso de Gestion de Configuracion | 1d? | 2015-11-03 | 2015-11-03 | 13.88d |  |  |
| 86 | 1.1.3.5.4 | Elaborar Metrica e Indice de Cambios a Items de Configuracion | 1d? | 2015-11-03 | 2015-11-03 | 13.88d |  |  |
| 87 | 1.1.3.5.5 | Traspaso de Informacion | 1d? | 2015-11-03 | 2015-11-03 | 13.88d |  |  |

| ID | WBS | Task | Duration | Start | Finish | Predecessors | Total slack | Free slack | Constraint | Resources | Work |
| --- | --- | --- | --- | --- | --- | --- | --- | --- | --- | --- | --- |
| 88 | 1.1.3.6 | **Aseguramiento de Calidad MES 1** | 7d | 2015-09-29 | 2015-10-06 |  |  |  |  | Julio | 80h |
| 89 | 1.1.3.6.1 | Preparar las actividades de QA | 0.5d | 2015-09-29 | 2015-09-29 |  | 4.88d | 0d |  | Julio | 4h |
| 90 | 1.1.3.6.2 | Ejecutar la Revisión de QA - Procesos | 0.5d | 2015-09-29 | 2015-09-29 | 89 | 4.88d | 0d |  | Julio | 4h |
| 91 | 1.1.3.6.3 | Levantar la No Conformidad | 0.5d | 2015-09-30 | 2015-09-30 | 90 | 4.88d | 0d |  | Julio | 4h |
| 92 | 1.1.3.6.4 | Elaborar el informe de Revision de QA para la Gerencia del Servicio | 0.5d | 2015-09-30 | 2015-09-30 | 91 | 4.88d |  |  | Julio | 4h |
| 93 | 1.1.3.6.5 | Traspaso de Informacion | 1d | 2015-09-29 | 2015-09-29 |  | 5.88d |  |  | Edwar | 8h |
| 94 | 1.1.3.7 | **Aseguramiento de Calidad MES 2** | 9d | 2015-10-13 | 2015-10-22 |  |  |  |  | Julio | 72h |
| 95 | 1.1.3.7.1 | Preparar las actividades de QA | 0.5d | 2015-10-13 | 2015-10-13 |  | 6.88d | 0d |  |  |  |
| 96 | 1.1.3.7.2 | Ejecutar la Revisión de QA - Procesos | 0.5d | 2015-10-13 | 2015-10-13 | 95 | 6.88d | 0d |  |  |  |
| 97 | 1.1.3.7.3 | Levantar la No Conformidad | 0.5d | 2015-10-14 | 2015-10-14 | 96 | 6.88d | 0d |  |  |  |
| 98 | 1.1.3.7.4 | Elaborar e Informar las actividades de QA a la Gerencia del Servicio | 0.5d | 2015-10-14 | 2015-10-14 | 97 | 6.88d |  |  |  |  |
| 99 | 1.1.3.7.5 | Traspaso de Informacion | 1d? | 2015-10-13 | 2015-10-13 |  | 7.88d |  |  |  |  |
| 100 | 1.1.3.8 | **Aseguramiento de Calidad MES 3** | 9d | 2015-11-10 | 2015-11-19 |  |  |  |  | Julio | 72h |
| 101 | 1.1.3.8.1 | Preparar las actividades de QA | 0.5d | 2015-11-10 | 2015-11-10 |  | 6.88d | 0d |  |  |  |
| 102 | 1.1.3.8.2 | Ejecutar la Revisión de QA - Procesos | 0.5d | 2015-11-10 | 2015-11-10 | 101 | 6.88d | 0d |  |  |  |
| 103 | 1.1.3.8.3 | Levantar la No Conformidad | 0.5d | 2015-11-11 | 2015-11-11 | 102 | 6.88d | 0d |  |  |  |
| 104 | 1.1.3.8.4 | Elaborar e Informar las actividades de QA a la Gerencia del Servicio | 0.5d | 2015-11-11 | 2015-11-11 | 103 | 6.88d |  |  |  |  |
| 105 | 1.1.3.8.5 | Traspaso de Informacion | 1d? | 2015-11-10 | 2015-11-10 |  | 7.88d |  |  |  |  |
| 106 | 1.1.4 | **Cierre** | 2d | 2015-11-18 | 2015-11-19 |  |  |  |  | Edwar; Julio; Profesor; Roger | 64h |
| 107 | 1.1.4.1 | **Cierre de Proyecto** | 1d? | 2015-11-18 | 2015-11-18 |  |  |  |  |  |  |
| 108 | 1.1.4.1.1 | Revisión de Entregables del Proyecto | 0.5d | 2015-11-18 | 2015-11-18 |  | 0.38d |  |  |  |  |
| 109 | 1.1.4.1.2 | Elaboracion del Acta de Aceptacion y Cierre del Proyecto | 0.5d | 2015-11-18 | 2015-11-18 |  | 0.38d |  |  |  |  |
| 110 | 1.1.4.1.3 | Traspaso de Informacion | 1d? | 2015-11-18 | 2015-11-18 |  | -0.12d | 0d |  |  |  |
| 111 | 1.1.4.2 | **Relatorio de Proyecto** | 1d | 2015-11-19 | 2015-11-19 |  |  |  |  |  |  |
| 112 | 1.1.4.2.1 | Elaborar relatorio de Proyecto | 1d | 2015-11-19 | 2015-11-19 |  | -0.12d | 0d |  |  |  |
| 113 | 1.1.4.2.2 | Revision y ajustes de relatorio por el equipo del Proyecto | 0.5d | 2015-11-19 | 2015-11-19 |  | -0.12d | 0d | start no earlier than 2015-11-19 |  |  |
| 114 | 1.1.4.2.3 | Revision de relatorio | 0.5d | 2015-11-19 | 2015-11-19 | 113 | -0.12d | 0d |  |  |  |
| 115 | 1.1.4.2.4 | Traspaso de Informacion | 1d? | 2015-11-19 | 2015-11-19 |  | -0.12d | 0d |  |  |  |

| ID | WBS | Task | Duration | Start | Finish | Predecessors | Complete | Remaining | Total slack | Free slack | Constraint | Resources | Work | Actual work |
| --- | --- | --- | --- | --- | --- | --- | --- | --- | --- | --- | --- | --- | --- | --- |
| 116 | 1.2 | **Proceso de Ingenieria** | 61d | 2015-09-08 A | 2015-11-18 |  | 4% | 58.39d |  |  |  | Edwar; Julio; Roger | 10189h | 315.75h |
| 117 | 1.2.1 | **Software UTP-GPS-ALARM** | 61d | 2015-09-08 A | 2015-11-18 |  | 4% | 58.39d |  |  |  | Edwar; Julio; Roger | 8797h | 272h |
| 118 | 1.2.1.1 | **Requerimientos** | 4.12d | 2015-09-08 A | 2015-09-11 |  | 88% | 0.52d |  |  |  | Edwar; Julio; Roger | 163h | 56h |
| 119 | 1.2.1.1.1 | Desarrollar Propuesta de Solucion | 1d | 2015-09-08 A | 2015-09-08 A |  | 100% |  |  |  |  | Edwar; Julio; Roger | 24h | 24h |
| 120 | 1.2.1.1.2 | Desarrollar Plan de Proyecto Actualizado | 1d | 2015-09-09 A | 2015-09-09 | 119 | 75% | 0.25d | 0.75d | 0d |  | Edwar; Julio; Roger | 24h | 18h |
| 121 | 1.2.1.1.3 | Elaborar Matriz de Trazabilidad | 1d | 2015-09-10 A | 2015-09-10 | 120 | 75% | 0.25d | 1d |  |  | Julio | 8h | 6h |
| 122 | 1.2.1.1.4 | Traspaso de Informacion | 1d | 2015-09-11 A | 2015-09-11 A | 121 | 100% |  |  |  |  | Edwar | 8h | 8h |
| 123 | 1.2.1.2 | **Analisis** | 18d | 2015-09-14 A | 2015-10-03 |  | 14% | 15.47d |  |  |  | Edwar; Julio; Roger | 2967h | 216h |
| 124 | 1.2.1.2.1 | Elaborar Documento con Diseño Actual | 1d | 2015-09-14 | 2015-09-14 |  |  |  | 16d | 0d | start no earlier than 2015-09-14 | Edwar; Roger | 16h |  |
| 125 | 1.2.1.2.2 | Elaborar Requerimientos para c/modulo | 9.88d | 2015-09-14 | 2015-09-24 |  |  |  | 47.12d |  | finish no earlier than 2015-09-24 | Edwar; Roger | 158h |  |
| 126 | 1.2.1.2.3 | Revision de Documento de Diseño Actual | 1d | 2015-09-15 | 2015-09-15 | 124 |  |  | 16d |  |  | Edwar | 8h |  |
| 127 | 1.2.1.2.4 | Traspaso de Informacion | 1d | 2015-09-15 | 2015-09-15 |  |  |  | 55d |  | start no earlier than 2015-09-15 | Edwar | 8h |  |
| 128 | 1.2.1.2.5 | **Casos de Uso** | 17.88d | 2015-09-14 A | 2015-10-03 |  | 20% | 14.3d |  |  |  | Edwar; Julio; Roger | 2337h | 216h |
| 129 | 1.2.1.2.5.1 | **Caso de Uso Modulo 1** | 17.88d | 2015-09-14 A | 2015-10-03 |  | 38% | 11.17d |  |  |  | Edwar; Julio; Roger | 533h | 24h |
| 130 | 1.2.1.2.5.1.1 | Entender la problemática actual | 1d | 2015-09-14 A | 2015-09-14 A |  | 100% |  |  |  |  | Roger | 8h | 8h |
| 131 | 1.2.1.2.5.1.2 | Elaborar Casos de Uso | 1d | 2015-09-15 A | 2015-09-15 A | 130 | 100% |  |  |  |  | Roger | 8h | 8h |
| 132 | 1.2.1.2.5.1.3 | Actualizar Glosario de Terminos | 0.5d | 2015-09-16 A | 2015-09-16 A | 131 | 100% |  |  |  |  | Roger | 4h | 4h |
| 133 | 1.2.1.2.5.1.4 | Elaborar Caso de Uso Mejorado | 0.5d | 2015-09-16 A | 2015-09-16 A | 132 | 100% |  |  |  |  | Roger | 4h | 4h |
| 134 | 1.2.1.2.5.1.5 | **Aseguramiento de Calidad del Caso de Uso Modulo 1** | 5d | 2015-09-29 | 2015-10-03 |  |  |  |  |  |  | Julio | 80h |  |
| 135 | 1.2.1.2.5.1.5.1 | Preparar las actividades de QA | 1d | 2015-09-29 | 2015-09-30 |  |  |  | 42.12d |  | finish no earlier than 2015-09-30 | Julio | 8h |  |
| 136 | 1.2.1.2.5.1.5.2 | Ejecutar la Revisión de QA - Procesos | 1d | 2015-09-29 | 2015-09-30 |  |  |  | 42.12d |  | finish no earlier than 2015-09-30 | Julio | 8h |  |
| 137 | 1.2.1.2.5.1.5.3 | Levantar la No Conformidad | 1d | 2015-09-30 | 2015-10-01 |  |  |  | 41.12d |  | finish no earlier than 2015-10-01 | Julio | 8h |  |
| 138 | 1.2.1.2.5.1.5.4 | Elaborar el informe de Revision de QA para la Gerencia del Servicio | 1d | 2015-09-29 | 2015-09-29 |  |  |  | 3.88d |  |  | Julio | 8h |  |
| 139 | 1.2.1.2.5.1.5.5 | Traspaso de Informacion | 1d | 2015-09-29 | 2015-09-29 |  |  |  | 3.88d |  |  | Edwar | 8h |  |

| ID | WBS | Task | Duration | Start | Finish | Predecessors | Complete | Remaining | Total slack | Free slack | Constraint | Resources | Work | Actual work |
| --- | --- | --- | --- | --- | --- | --- | --- | --- | --- | --- | --- | --- | --- | --- |
| 140 | 1.2.1.2.5.2 | **Caso de Uso Modulo 2** | 15d | 2015-09-17 A | 2015-10-03 |  | 44% | 8.33d |  |  |  | Edwar; Julio; Roger | 471h | 192h |
| 141 | 1.2.1.2.5.2.1 | Entender la problemática actual | 1d | 2015-09-17 A | 2015-09-17 A |  | 100% |  |  |  |  | Roger | 8h | 8h |
| 142 | 1.2.1.2.5.2.2 | Elaborar Casos de Uso | 1d | 2015-09-18 A | 2015-09-18 A | 141 | 100% |  |  |  |  | Roger | 8h | 8h |
| 143 | 1.2.1.2.5.2.3 | Actualizar Glosario de Terminos | 1d | 2015-09-19 A | 2015-09-19 A | 144 | 100% |  |  |  |  | Roger | 8h | 8h |
| 144 | 1.2.1.2.5.2.4 | Elaborar Caso de Uso Mejorado | 1d | 2015-09-19 A | 2015-09-19 A | 142 | 100% |  |  |  |  | Roger | 8h | 8h |
| 145 | 1.2.1.2.5.2.5 | **Aseguramiento de Calidad del Caso de Uso Modulo 2** | 5d | 2015-09-29 | 2015-10-03 |  |  |  |  |  |  | Julio | 80h |  |
| 146 | 1.2.1.2.5.2.5.1 | Preparar las actividades de QA | 1d | 2015-09-29 | 2015-09-29 |  |  |  | 3.88d |  |  | Julio | 8h |  |
| 147 | 1.2.1.2.5.2.5.2 | Ejecutar la Revisión de QA - Procesos | 1d | 2015-09-29 | 2015-09-29 |  |  |  | 3.88d |  |  | Julio | 8h |  |
| 148 | 1.2.1.2.5.2.5.3 | Levantar la No Conformidad | 1d | 2015-09-29 | 2015-09-29 |  |  |  | 3.88d |  |  | Julio | 8h |  |
| 149 | 1.2.1.2.5.2.5.4 | Elaborar el informe de Revision de QA para la Gerencia del Servicio | 1d | 2015-09-29 | 2015-09-29 |  |  |  | 3.88d |  |  | Julio | 8h |  |
| 150 | 1.2.1.2.5.2.5.5 | Traspaso de Informacion | 1d | 2015-09-29 | 2015-09-29 |  |  |  | 3.88d |  |  | Edwar | 8h |  |
| 151 | 1.2.1.2.5.3 | **Caso de Uso Modulo 3** | 13d | 2015-09-19 | 2015-10-03 |  |  |  |  |  |  | Edwar; Julio; Roger | 504h |  |
| 152 | 1.2.1.2.5.3.1 | Entender la problemática actual | 1d | 2015-09-19 | 2015-09-19 |  |  |  | 11.88d |  |  | Roger | 8h |  |
| 153 | 1.2.1.2.5.3.2 | Elaborar Casos de Uso | 1d | 2015-09-19 | 2015-09-19 |  |  |  | 9.88d | 0d | start no earlier than 2015-09-19 | Roger | 8h |  |
| 154 | 1.2.1.2.5.3.3 | Actualizar Glosario de Terminos | 1d | 2015-09-21 | 2015-09-21 | 153 |  |  | 9.88d | 0d |  | Roger | 8h |  |
| 155 | 1.2.1.2.5.3.4 | Elaborar Caso de Uso Mejorado | 1d | 2015-09-22 | 2015-09-22 | 154 |  |  | 9.88d |  |  | Roger | 8h |  |
| 156 | 1.2.1.2.5.3.5 | **Aseguramiento de Calidad del Caso de Uso Modulo 3** | 5d | 2015-09-29 | 2015-10-03 |  |  |  |  |  |  | Edwar; Julio; Roger | 160h |  |
| 157 | 1.2.1.2.5.3.5.1 | Preparar las actividades de QA | 1d? | 2015-09-29 | 2015-09-29 |  |  |  | 3.88d |  |  | Julio | 8h |  |
| 158 | 1.2.1.2.5.3.5.2 | Ejecutar la Revisión de QA - Procesos | 1d? | 2015-09-29 | 2015-09-29 |  |  |  | 3.88d |  |  | Julio | 8h |  |
| 159 | 1.2.1.2.5.3.5.3 | Levantar la No Conformidad | 1d? | 2015-09-29 | 2015-09-29 |  |  |  | 3.88d |  |  | Julio | 8h |  |
| 160 | 1.2.1.2.5.3.5.4 | Elaborar el informe de Revision de QA para la Gerencia del Servicio | 1d? | 2015-09-29 | 2015-09-29 |  |  |  | 3.88d |  |  | Julio | 8h |  |
| 161 | 1.2.1.2.5.3.5.5 | Traspaso de Informacion | 1d? | 2015-09-29 | 2015-09-29 |  |  |  | 3.88d |  |  | Edwar | 8h |  |
| 162 | 1.2.1.2.5.4 | **Caso de Uso Modulo 4** | 12d | 2015-09-21 | 2015-10-03 |  |  |  |  |  |  | Edwar; Julio; Roger | 400h |  |
| 163 | 1.2.1.2.5.4.1 | Entender la problemática actual | 1d? | 2015-09-21 | 2015-09-21 |  |  |  | 10.88d |  |  | Roger | 8h |  |
| 164 | 1.2.1.2.5.4.2 | Elaborar Casos de Uso | 1d? | 2015-09-21 | 2015-09-21 |  |  |  | 10.88d |  |  | Roger | 8h |  |
| 165 | 1.2.1.2.5.4.3 | Actualizar Glosario de Terminos | 1d? | 2015-09-21 | 2015-09-21 |  |  |  | 10.88d |  |  | Roger | 8h |  |
| 166 | 1.2.1.2.5.4.4 | Elaborar Caso de Uso Mejorado | 1d? | 2015-09-21 | 2015-09-21 |  |  |  | 10.88d |  |  | Roger | 8h |  |

| ID | WBS | Task | Type | Duration | Start | Finish | Predecessors | Total slack | Free slack | Constraint | Resources | Work |
| --- | --- | --- | --- | --- | --- | --- | --- | --- | --- | --- | --- | --- |
| 167 | 1.2.1.2.5.4.5 | **Aseguramiento de Calidad del Caso de Uso Modulo 4** |  | 5d | 2015-09-29 | 2015-10-03 |  |  |  |  | Julio | 80h |
| 168 | 1.2.1.2.5.4.5.1 | Preparar las actividades de QA |  | 1d? | 2015-09-29 | 2015-09-29 |  | 3.88d |  |  | Julio | 8h |
| 169 | 1.2.1.2.5.4.5.2 | Ejecutar la Revisión de QA - Procesos |  | 1d? | 2015-09-29 | 2015-09-29 |  | 3.88d |  |  | Julio | 8h |
| 170 | 1.2.1.2.5.4.5.3 | Levantar la No Conformidad |  | 1d? | 2015-09-29 | 2015-09-29 |  | 3.88d |  |  | Julio | 8h |
| 171 | 1.2.1.2.5.4.5.4 | Elaborar el informe de Revision de QA para la Gerencia del Servicio |  | 1d? | 2015-09-29 | 2015-09-29 |  | 3.88d |  |  | Julio | 8h |
| 172 | 1.2.1.2.5.4.5.5 | Traspaso de Informacion |  | 1d? | 2015-09-29 | 2015-09-29 |  | 3.88d |  |  | Edwar | 8h |
| 173 | 1.2.1.2.6 | Actualizar Matriz de Trazabilidad de Requerimientos |  | 1d? | 2015-09-14 | 2015-09-14 |  | 17d |  |  |  |  |
| 174 | 1.2.1.2.7 | Traspaso de Informacion |  | 1d? | 2015-09-14 | 2015-09-14 |  | 17d |  |  | Edwar | 8h |
| 175 | 1.2.1.3 | **Diseño** |  | 9d | 2015-10-05 | 2015-10-15 |  |  |  |  | Edwar; Julio; Roger | 486h |
| 176 | 1.2.1.3.1 | **Documento de Diseño** |  | 3d | 2015-10-05 | 2015-10-07 |  |  |  |  | Edwar; Julio; Roger | 263h |
| 177 | 1.2.1.3.1.1 | Analisis de la Informacion ,elaborar Documento de Diseño Tecnico |  | 1d | 2015-10-05 | 2015-10-05 |  | 38d |  | start no earlier than 2015-10-05 | Julio | 8h |
| 178 | 1.2.1.3.1.2 | Revision de Documento de Diseño Mejorado | manual | 1d | 2015-10-06 | 2015-10-06 |  |  |  |  | Julio | 8h |
| 179 | 1.2.1.3.1.3 | Traspaso de Informacion | manual | 1d | 2015-10-06 | 2015-10-06 |  |  |  |  | Edwar | 8h |
| 180 | 1.2.1.3.1.4 | **Aseguramiento de la calidad** |  | 6d | 2015-10-08 | 2015-10-14 |  |  |  |  | Edwar; Julio | 167h |
| 181 | 1.2.1.3.1.4.1 | Preparar las actividades de QA. | manual | 1d | 2015-10-08 | 2015-10-08 |  |  |  | start no earlier than 2015-10-08 | Julio | 8h |
| 182 | 1.2.1.3.1.4.2 | Ejecutar la Revisión de QA | manual | 1d | 2015-10-09 | 2015-10-09 | 181 |  |  |  | Julio | 8h |
| 183 | 1.2.1.3.1.4.3 | Ejecutar la Revisión de procesos | manual | 1d | 2015-10-10 | 2015-10-10 |  |  |  | start no earlier than 2015-10-10 | Julio | 8h |
| 184 | 1.2.1.3.1.4.4 | Levantar la No Conformidad |  | 1d | 2015-10-10 | 2015-10-10 |  | 34d |  | start no earlier than 2015-10-10 | Julio | 8h |
| 185 | 1.2.1.3.1.4.5 | Realizar el seguimiento |  | 2.88d | 2015-10-12 | 2015-10-14 |  | 31.12d |  | finish no earlier than 2015-10-14 | Julio | 23h |
| 186 | 1.2.1.3.1.4.6 | Elaborar el informe de Revision de QA para la Gerencia del Servicio |  | 1d | 2015-10-12 | 2015-10-12 |  | 33d |  | start no earlier than 2015-10-12 | Julio | 8h |
| 187 | 1.2.1.3.1.4.7 | Traspaso de Informacion |  | 1d | 2015-10-14 | 2015-10-14 |  | 31d |  | start no earlier than 2015-10-14 | Edwar | 8h |
| 188 | 1.2.1.3.2 | Actualizar Matriz de Trazabilidad de Requerimientos |  | 1d | 2015-10-15 | 2015-10-15 |  | 30d |  | start no earlier than 2015-10-15 |  |  |
| 189 | 1.2.1.3.3 | Traspaso de Informacion |  | 0.88d | 2015-10-15 | 2015-10-15 |  | 30.12d |  | finish no earlier than 2015-10-15 | Edwar | 7h |
| 190 | 1.2.1.4 | **Inducción de personal** |  | 29d | 2015-09-11 | 2015-10-15 |  |  |  |  | Edwar; Roger | 1104h |
| 191 | 1.2.1.4.1 | Establecer personal para inducción |  | 1d | 2015-09-11 | 2015-09-11 |  | 1.88d | 0d | start no earlier than 2015-09-11 | Roger | 8h |
| 192 | 1.2.1.4.2 | Realizar inducción al personal |  | 25d | 2015-09-12 | 2015-10-12 | 191 | 1.88d | 0d | finish no earlier than 2015-10-10 | Roger | 200h |
| 193 | 1.2.1.4.3 | Verificar proceso de inducción |  | 25d | 2015-10-14 | 2015-11-11 | 194 | 7d |  | finish no earlier than 2015-10-12 | Edwar; Roger | 400h |
| 194 | 1.2.1.4.4 | Elaborar Certificado de Induccion de Personal |  | 1d | 2015-10-13 | 2015-10-13 | 192 | 1.88d | 0d |  | Edwar; Roger | 16h |
| 195 | 1.2.1.4.5 | Traspaso de Informacion |  | 1d | 2015-10-14 | 2015-10-14 |  | 31d |  | start no earlier than 2015-10-14 | Edwar | 8h |
| 196 | 1.2.1.4.6 | Pasar a area de Desarrollo a Personal Capacitado |  | 1d | 2015-10-15 | 2015-10-15 |  | 30d |  | start no earlier than 2015-10-15 | Roger | 8h |

| ID | WBS | Task | Duration | Start | Finish | Total slack | Free slack | Constraint | Resources | Work |
| --- | --- | --- | --- | --- | --- | --- | --- | --- | --- | --- |
| 197 | 1.2.1.5 | **Construccion** | 21d | 2015-10-16 | 2015-11-09 |  |  |  | Edwar; Julio; Roger | 1825h |
| 198 | 1.2.1.5.1 | **Modulo de Instalacion de APK** | 2.88d | 2015-10-16 | 2015-10-19 |  |  |  | Edwar; Roger | 254h |
| 199 | 1.2.1.5.1.1 | **Construccion de Modulo** | 2d | 2015-10-16 | 2015-10-17 | 0.88d |  |  | Edwar; Roger | 64h |
| 200 | 1.2.1.5.1.1.1 | Asignar permisos de usuario para la aplicación | 1d | 2015-10-16 | 2015-10-16 | 1.88d |  |  | Edwar | 8h |
| 201 | 1.2.1.5.1.1.2 | Vincular usuario a cuenta | 1d | 2015-10-16 | 2015-10-16 | 1.88d |  |  | Roger | 8h |
| 202 | 1.2.1.5.1.1.3 | Confirmacion y aceptar condiciones y terminos de uso | 1d | 2015-10-17 | 2015-10-17 | 0.88d |  | start no earlier than 2015-10-17 | Edwar | 8h |
| 203 | 1.2.1.5.1.1.4 | Traspaso de Informacion | 1d | 2015-10-17 | 2015-10-17 | 0.88d |  | start no earlier than 2015-10-17 | Edwar | 8h |
| 204 | 1.2.1.5.1.2 | **Pruebas de Modulo** | 1d | 2015-10-17 | 2015-10-17 |  |  |  | Julio | 32h |
| 205 | 1.2.1.5.1.2.1 | Realizar Pruebas del Modulo | 1d? | 2015-10-17 | 2015-10-17 | -0.12d | 0d |  | Julio | 8h |
| 206 | 1.2.1.5.1.2.2 | Elaborar Informe de Pruebas | 1d? | 2015-10-17 | 2015-10-17 | -0.12d | 0d |  | Julio | 8h |
| 207 | 1.2.1.5.1.2.3 | Traspaso de Informacion | 1d? | 2015-10-17 | 2015-10-17 | -0.12d | 0d |  | Edwar | 8h |
| 208 | 1.2.1.5.1.3 | **Guias de Modulo** | 2d | 2015-10-19 | 2015-10-20 |  |  |  | Edwar; Roger | 56h |
| 209 | 1.2.1.5.1.3.1 | Elaborar Manual de Usuario del Modulo | 2d | 2015-10-19 | 2015-10-20 | -0.12d | 0d |  | Roger | 16h |
| 210 | 1.2.1.5.1.3.2 | Traspaso de Informacion | 1d | 2015-10-20 | 2015-10-20 | 26d |  | start no earlier than 2015-10-20 | Edwar | 8h |
| 211 | 1.2.1.5.1.4 | **Aseguramiento de Calidad del Modulo Instalacion APK** | 2d | 2015-10-20 | 2015-10-21 |  |  |  | Julio | 56h |
| 212 | 1.2.1.5.1.4.1 | Preparar las actividades de QA | 1d | 2015-10-20 | 2015-10-20 | 0.88d |  |  | Julio | 8h |
| 213 | 1.2.1.5.1.4.2 | Ejecutar la Revisión de QA - Procesos | 1d | 2015-10-20 | 2015-10-20 | 0.88d |  |  | Julio | 8h |
| 214 | 1.2.1.5.1.4.3 | Levantar la No Conformidad | 1d | 2015-10-21 | 2015-10-21 | 25d |  | start no earlier than 2015-10-21 | Julio | 8h |
| 215 | 1.2.1.5.1.4.4 | Elaborar el informe de Revision de QA para la Gerencia del Servicio | 1d | 2015-10-21 | 2015-10-21 | 25d |  | start no earlier than 2015-10-21 | Julio | 8h |
| 216 | 1.2.1.5.1.4.5 | Traspaso de Informacion | 1d | 2015-10-21 | 2015-10-21 | 25d |  | start no earlier than 2015-10-21 | Edwar | 8h |
| 217 | 1.2.1.5.2 | **Modulo de Ingreso de Coordenadas y Destino** | 10d | 2015-10-20 | 2015-10-30 |  |  |  | Roger | 319h |
| 218 | 1.2.1.5.2.1 | **Construccion de Modulo** | 4.88d | 2015-10-20 | 2015-10-24 |  |  |  | Roger | 87h |
| 219 | 1.2.1.5.2.1.1 | Ubicación Actual | 1d | 2015-10-20 | 2015-10-20 | 3.88d |  |  | Roger | 8h |
| 220 | 1.2.1.5.2.1.2 | Asignar Destino | 1d | 2015-10-21 | 2015-10-21 | 25d |  | start no earlier than 2015-10-21 | Roger | 8h |
| 221 | 1.2.1.5.2.1.3 | Cálculo de distancia hasta el destino | 1d | 2015-10-22 | 2015-10-22 | 24d |  | start no earlier than 2015-10-22 | Roger | 8h |
| 222 | 1.2.1.5.2.1.4 | Establecer Rango de Alarma | 1d | 2015-10-23 | 2015-10-23 | 23d |  | start no earlier than 2015-10-23 | Roger | 8h |
| 223 | 1.2.1.5.2.1.5 | Establecer tipo de Alarma ,volumen , vibrador | 1d | 2015-10-24 | 2015-10-24 | 22d |  | start no earlier than 2015-10-24 | Roger | 8h |
| 224 | 1.2.1.5.2.1.6 | Traspaso de Informacion | 1d | 2015-10-24 | 2015-10-24 | 22d |  | start no earlier than 2015-10-24 | Edwar | 8h |

| ID | WBS | Task | Duration | Start | Finish | Predecessors | Total slack | Free slack | Constraint | Resources | Work |
| --- | --- | --- | --- | --- | --- | --- | --- | --- | --- | --- | --- |
| 225 | 1.2.1.5.2.2 | **Pruebas de Modulo** | 3d | 2015-10-24 | 2015-10-27 |  |  |  |  | Julio | 48h |
| 226 | 1.2.1.5.2.2.1 | Realizar Pruebas del Modulo | 1d | 2015-10-24 | 2015-10-24 |  | 1.88d |  |  | Julio | 8h |
| 227 | 1.2.1.5.2.2.2 | Elaborar Informe de Pruebas | 1d | 2015-10-26 | 2015-10-26 |  | -0.12d | 0d | start no earlier than 2015-10-25 | Julio | 8h |
| 228 | 1.2.1.5.2.2.3 | Traspaso de Informacion | 1d | 2015-10-27 | 2015-10-27 | 227 | -0.12d | 0d |  | Edwar | 8h |
| 229 | 1.2.1.5.2.3 | **Guias de Modulo** | 2d | 2015-10-28 | 2015-10-29 |  |  |  |  | Roger | 32h |
| 230 | 1.2.1.5.2.3.1 | Elaborar Manual de Usuario del Modulo | 1d? | 2015-10-28 | 2015-10-29 |  | 18.12d |  | finish no earlier than 2015-10-29 | Roger | 8h |
| 231 | 1.2.1.5.2.3.2 | Traspaso de Informacion | 1d? | 2015-10-29 | 2015-10-29 |  | 18d |  | start no earlier than 2015-10-29 | Edwar | 8h |
| 232 | 1.2.1.5.2.4 | **Aseguramiento de Calidad del Modulo Ingreso Coordenadas y Destino** | 3d | 2015-10-28 | 2015-10-30 |  |  |  |  | Julio | 72h |
| 233 | 1.2.1.5.2.4.1 | Preparar las actividades de QA | 1d | 2015-10-28 | 2015-10-28 |  | 1.88d |  |  | Julio | 8h |
| 234 | 1.2.1.5.2.4.2 | Ejecutar la Revisión de QA - Procesos | 2d | 2015-10-27 | 2015-10-29 |  | 18.12d |  | finish no earlier than 2015-10-29 | Julio | 16h |
| 235 | 1.2.1.5.2.4.3 | Levantar la No Conformidad | 1d | 2015-10-28 | 2015-10-28 |  | 1.88d |  |  | Julio | 8h |
| 236 | 1.2.1.5.2.4.4 | Elaborar el informe de Revision de QA para la Gerencia del Servicio | 1d | 2015-10-28 | 2015-10-28 |  | 1.88d |  |  | Julio | 8h |
| 237 | 1.2.1.5.2.4.5 | Traspaso de Informacion | 1d | 2015-10-28 | 2015-10-28 |  | 1.88d |  |  | Edwar | 8h |
| 238 | 1.2.1.5.3 | **Modulo de Rutas** | 9.12d | 2015-10-20 | 2015-10-29 |  |  |  |  | Edwar | 250h |
| 239 | 1.2.1.5.3.1 | **Construccion de Modulo** | 3d | 2015-10-20 | 2015-10-22 |  |  |  |  | Edwar | 56h |
| 240 | 1.2.1.5.3.1.1 | Mostrar lista de ultimas rutas usadas | 1d | 2015-10-20 | 2015-10-20 |  | 1.88d |  |  | Edwar | 8h |
| 241 | 1.2.1.5.3.1.2 | Guardar Historial de Rutas | 1d | 2015-10-21 | 2015-10-21 |  | 25d |  | start no earlier than 2015-10-21 | Edwar | 8h |
| 242 | 1.2.1.5.3.1.3 | Guardar Rutas Favoritas | 1d | 2015-10-22 | 2015-10-22 |  | 24d |  | start no earlier than 2015-10-22 | Edwar | 8h |
| 243 | 1.2.1.5.3.1.4 | Traspaso de Informacion | 1d | 2015-10-22 | 2015-10-22 |  | 24d |  | start no earlier than 2015-10-22 | Edwar | 8h |
| 244 | 1.2.1.5.3.2 | **Pruebas de Modulo** | 2d | 2015-10-23 | 2015-10-24 |  |  |  |  | Julio | 40h |
| 245 | 1.2.1.5.3.2.1 | Realizar Pruebas del Modulo | 1d | 2015-10-23 | 2015-10-24 |  | 22.12d |  | finish no earlier than 2015-10-24 | Julio | 8h |
| 246 | 1.2.1.5.3.2.2 | Elaborar Informe de Pruebas | 1d | 2015-10-24 | 2015-10-24 |  | 22d |  | start no earlier than 2015-10-24 | Julio | 8h |
| 247 | 1.2.1.5.3.2.3 | Traspaso de Informacion | 1d | 2015-10-24 | 2015-10-24 |  | 22d |  | start no earlier than 2015-10-24 | Julio | 8h |
| 248 | 1.2.1.5.3.3 | **Guias de Modulo** | 1.12d | 2015-10-26 | 2015-10-27 |  |  |  |  | Edwar | 25h |
| 249 | 1.2.1.5.3.3.1 | Elaborar Manual de Usuario del Modulo | 1d | 2015-10-26 | 2015-10-27 |  | 20.12d |  | finish no earlier than 2015-10-27 | Edwar | 8h |
| 250 | 1.2.1.5.3.3.2 | Traspaso de Informacion | 1d | 2015-10-27 | 2015-10-27 |  | 20d |  | start no earlier than 2015-10-27 | Edwar | 8h |

| ID | WBS | Task | Duration | Start | Finish | Predecessors | Total slack | Free slack | Constraint | Resources | Work |
| --- | --- | --- | --- | --- | --- | --- | --- | --- | --- | --- | --- |
| 251 | 1.2.1.5.3.4 | **Aseguramiento de Calidad del Modulo Rutas** | 2d | 2015-10-28 | 2015-10-29 |  |  |  |  | Julio | 56h |
| 252 | 1.2.1.5.3.4.1 | Preparar las actividades de QA | 1d | 2015-10-28 | 2015-10-28 |  | 1d |  |  | Julio | 8h |
| 253 | 1.2.1.5.3.4.2 | Ejecutar la Revisión de QA - Procesos | 1d | 2015-10-28 | 2015-10-29 |  | 18.12d |  | finish no earlier than 2015-10-29 | Julio | 8h |
| 254 | 1.2.1.5.3.4.3 | Levantar la No Conformidad | 1d | 2015-10-29 | 2015-10-29 |  | 18d |  | start no earlier than 2015-10-29 | Julio | 8h |
| 255 | 1.2.1.5.3.4.4 | Elaborar el informe de Revision de QA para la Gerencia del Servicio | 1d | 2015-10-29 | 2015-10-29 |  | 18d |  | start no earlier than 2015-10-29 | Julio | 8h |
| 256 | 1.2.1.5.3.4.5 | Traspaso de Informacion | 1d | 2015-10-29 | 2015-10-29 |  | 18d |  | start no earlier than 2015-10-29 | Edwar | 8h |
| 257 | 1.2.1.5.4 | **Modulo de Seguridad** | 8.12d | 2015-10-30 | 2015-11-07 |  |  |  |  | Edwar; Roger | 323h |
| 258 | 1.2.1.5.4.1 | **Construccion de Modulo** | 3d | 2015-10-30 | 2015-11-02 |  | 5d |  |  | Roger | 48h |
| 259 | 1.2.1.5.4.1.1 | Iniciar la aplicación al iniciar el dispositivo siempre que el usuario lo desee. | 1d | 2015-10-30 | 2015-10-30 |  | 5d | 0d |  | Roger | 8h |
| 260 | 1.2.1.5.4.1.2 | Comprobaciones de seguridad adicionales realizadas con el muestreo de licencia. | 1d | 2015-10-31 | 2015-10-31 | 259 | 5d | 0d |  | Roger | 8h |
| 261 | 1.2.1.5.4.1.3 | Control de piratería de la aplicación | 1d | 2015-11-02 | 2015-11-02 | 260 | 5d |  |  | Roger | 8h |
| 262 | 1.2.1.5.4.2 | **Pruebas de Modulo** | 2.12d | 2015-11-02 | 2015-11-03 |  |  |  |  | Julio | 41h |
| 263 | 1.2.1.5.4.2.1 | Realizar Pruebas del Modulo | 1d | 2015-11-02 | 2015-11-02 |  | 1d |  |  | Julio | 8h |
| 264 | 1.2.1.5.4.2.2 | Elaborar Informe de Pruebas | 1d | 2015-11-03 | 2015-11-03 |  | 14d |  | start no earlier than 2015-11-03 | Julio | 8h |
| 265 | 1.2.1.5.4.2.3 | Traspaso de Informacion | 1d | 2015-11-03 | 2015-11-03 |  | 14d |  | start no earlier than 2015-11-03 | Edwar | 8h |
| 266 | 1.2.1.5.4.3 | **Guias de Modulo** | 1.12d | 2015-11-04 | 2015-11-04 |  |  |  |  | Roger | 25h |
| 267 | 1.2.1.5.4.3.1 | Elaborar Manual de Usuario del Modulo | 1d | 2015-11-04 | 2015-11-04 |  | 0d |  |  | Roger | 8h |
| 268 | 1.2.1.5.4.3.2 | Traspaso de Informacion | 1d | 2015-11-04 | 2015-11-04 |  | 13d |  | start no earlier than 2015-11-04 | Edwar | 8h |
| 269 | 1.2.1.5.4.4 | **Aseguramiento de Calidad del Modulo Seguridad** | 3d | 2015-11-05 | 2015-11-07 |  |  |  |  | Julio | 79h |
| 270 | 1.2.1.5.4.4.1 | Preparar las actividades de QA | 1d | 2015-11-05 | 2015-11-05 |  | 2d |  |  | Julio | 8h |
| 271 | 1.2.1.5.4.4.2 | Ejecutar la Revisión de QA - Procesos | 2.88d | 2015-11-05 | 2015-11-07 |  | 10.12d |  | finish no earlier than 2015-11-07 | Julio | 23h |
| 272 | 1.2.1.5.4.4.3 | Levantar la No Conformidad | 1d | 2015-11-07 | 2015-11-07 |  | 10d |  | start no earlier than 2015-11-07 | Julio | 8h |
| 273 | 1.2.1.5.4.4.4 | Elaborar el informe de Revision de QA para la Gerencia del Servicio | 1d | 2015-11-07 | 2015-11-07 |  | 10d |  | start no earlier than 2015-11-07 | Julio | 8h |
| 274 | 1.2.1.5.4.4.5 | Traspaso de Informacion | 1d | 2015-11-07 | 2015-11-07 |  | 10d |  | start no earlier than 2015-11-07 | Edwar | 8h |
| 275 | 1.2.1.5.5 | Actualizar Matriz de Trazabilidad de Requerimientos | 20.88d | 2015-10-16 | 2015-11-09 |  | 9.12d |  | start no earlier than 2015-10-16 | Julio | 167h |
| 276 | 1.2.1.5.6 | Traspaso de Informacion | 1d | 2015-11-09 | 2015-11-09 |  | 9d |  | start no earlier than 2015-11-09 | Edwar | 8h |

| ID | WBS | Task | Duration | Start | Finish | Total slack | Constraint | Resources | Work |
| --- | --- | --- | --- | --- | --- | --- | --- | --- | --- |
| 277 | 1.2.1.6 | **Pruebas** | 7d | 2015-11-10 | 2015-11-17 |  |  | Julio | 676h |
| 278 | 1.2.1.6.1 | **Pruebas Unitarias** | 4d | 2015-11-10 | 2015-11-13 | 2d |  | Julio | 227h |
| 279 | 1.2.1.6.1.1 | **Modulo de Instalacion de APK** | 2d | 2015-11-10 | 2015-11-11 | 4.88d |  | Roger | 48h |
| 280 | 1.2.1.6.1.1.1 | Elaborar Pruebas de Modulo | 2d | 2015-11-10 | 2015-11-11 | 4.88d |  | Roger | 16h |
| 281 | 1.2.1.6.1.1.2 | Elaborar Informe de Prueba | 1d | 2015-11-11 | 2015-11-11 | 4.88d | start no earlier than 2015-11-11 | Roger | 8h |
| 282 | 1.2.1.6.1.1.3 | Traspaso de Informacion | 1d | 2015-11-11 | 2015-11-11 | 4.88d | start no earlier than 2015-11-11 | Edwar | 8h |
| 283 | 1.2.1.6.1.2 | **Modulo de Ingreso de Coordenadas y Destino** | 2.12d | 2015-11-12 | 2015-11-13 |  |  | Roger | 49h |
| 284 | 1.2.1.6.1.2.1 | Elaborar Pruebas de Modulo | 2d | 2015-11-12 | 2015-11-13 | 0d |  | Roger | 16h |
| 285 | 1.2.1.6.1.2.2 | Elaborar Informe de Prueba | 1d | 2015-11-13 | 2015-11-13 | 5d | start no earlier than 2015-11-13 | Roger | 8h |
| 286 | 1.2.1.6.1.2.3 | Traspaso de Informacion | 1d | 2015-11-13 | 2015-11-13 | 5d | start no earlier than 2015-11-13 | Edwar | 8h |
| 287 | 1.2.1.6.1.3 | **Modulo de Rutas** | 2.12d | 2015-11-12 | 2015-11-13 |  |  | Edwar | 49h |
| 288 | 1.2.1.6.1.3.1 | Elaborar Pruebas de Modulo | 2d | 2015-11-12 | 2015-11-13 | 0d |  | Edwar | 16h |
| 289 | 1.2.1.6.1.3.2 | Elaborar Informe de Prueba | 1d | 2015-11-13 | 2015-11-13 | 5d | start no earlier than 2015-11-13 | Edwar | 8h |
| 290 | 1.2.1.6.1.3.3 | Traspaso de Informacion | 1d | 2015-11-13 | 2015-11-13 | 5d | start no earlier than 2015-11-13 | Edwar | 8h |
| 291 | 1.2.1.6.1.4 | **Modulo de Seguridad** | 2.12d | 2015-11-12 | 2015-11-13 |  |  | Julio | 49h |
| 292 | 1.2.1.6.1.4.1 | Elaborar Pruebas de Modulo | 2d | 2015-11-12 | 2015-11-13 | 0d |  | Edwar | 16h |
| 293 | 1.2.1.6.1.4.2 | Elaborar Informe de Prueba | 1d | 2015-11-12 | 2015-11-12 | 1d |  | Edwar | 8h |
| 294 | 1.2.1.6.1.4.3 | Traspaso de Informacion | 1d | 2015-11-12 | 2015-11-12 | 1d |  | Edwar | 8h |
| 295 | 1.2.1.6.2 | **Pruebas de QA para todos los Modulos** | 1.12d | 2015-11-14 | 2015-11-14 |  |  | Julio | 73h |
| 296 | 1.2.1.6.2.1 | **Aseguramiento de la calidad** | 1.12d | 2015-11-14 | 2015-11-14 |  |  | Julio | 64h |
| 297 | 1.2.1.6.2.1.1 | Preparar las actividades de QA. | 1d | 2015-11-14 | 2015-11-14 | 0d |  | Julio | 8h |
| 298 | 1.2.1.6.2.1.2 | Ejecutar la Revisión de QA | 1d | 2015-11-14 | 2015-11-14 | 0d |  | Julio | 8h |
| 299 | 1.2.1.6.2.1.3 | Ejecutar la Revisión de procesos | 0.88d | 2015-11-14 | 2015-11-14 | 4.12d | start no earlier than 2015-11-14 | Julio | 7h |
| 300 | 1.2.1.6.2.1.4 | Levantar la No Conformidad | 1d | 2015-11-14 | 2015-11-14 | 0d |  | Julio | 8h |
| 301 | 1.2.1.6.2.1.5 | Realizar el seguimiento | 1d | 2015-11-14 | 2015-11-14 | 0d |  | Julio | 8h |
| 302 | 1.2.1.6.2.1.6 | Elaborar el informe de Revision de QA para la Gerencia del Servicio | 1d | 2015-11-14 | 2015-11-14 | 4d | start no earlier than 2015-11-14 | Julio | 8h |
| 303 | 1.2.1.6.2.1.7 | Traspaso de Informacion | 1d | 2015-11-14 | 2015-11-14 | 4d | start no earlier than 2015-11-14 | Edwar | 8h |

| ID | WBS | Task | Duration | Start | Finish | Total slack | Constraint | Resources | Work |
| --- | --- | --- | --- | --- | --- | --- | --- | --- | --- |
| 304 | 1.2.1.6.3 | **Pruebas de Cliente** | 2d | 2015-11-16 | 2015-11-17 |  |  | Edwar; Julio; Roger | 304h |
| 305 | 1.2.1.6.3.1 | **Modulo de Instalacion de APK** | 1d | 2015-11-16 | 2015-11-16 | 0.88d |  | Edwar; Julio; Roger | 64h |
| 306 | 1.2.1.6.3.1.1 | Elaborar Pruebas de Modulo | 1d | 2015-11-16 | 2015-11-16 | 0.88d |  | Edwar; Julio; Roger | 24h |
| 307 | 1.2.1.6.3.1.2 | Elaborar Informe de Prueba | 1d | 2015-11-16 | 2015-11-16 | 0.88d |  | Roger | 8h |
| 308 | 1.2.1.6.3.1.3 | Traspaso de Informacion | 1d | 2015-11-16 | 2015-11-16 | 0.88d |  | Edwar | 8h |
| 309 | 1.2.1.6.3.2 | **Modulo de Ingreso de Coordenadas y Destino** | 1d | 2015-11-16 | 2015-11-16 | 0.88d |  | Edwar; Julio; Roger | 64h |
| 310 | 1.2.1.6.3.2.1 | Elaborar Pruebas de Modulo | 1d | 2015-11-16 | 2015-11-16 | 0.88d |  | Edwar; Julio; Roger | 24h |
| 311 | 1.2.1.6.3.2.2 | Elaborar Informe de Prueba | 1d | 2015-11-16 | 2015-11-16 | 0.88d |  | Roger | 8h |
| 312 | 1.2.1.6.3.2.3 | Traspaso de Informacion | 1d | 2015-11-16 | 2015-11-16 | 0.88d |  | Edwar | 8h |
| 313 | 1.2.1.6.3.3 | **Modulo de Rutas** | 1d | 2015-11-16 | 2015-11-16 | 0.88d |  | Edwar; Julio; Roger | 64h |
| 314 | 1.2.1.6.3.3.1 | Elaborar Pruebas de Modulo | 1d | 2015-11-16 | 2015-11-16 | 0.88d |  | Edwar; Julio; Roger | 24h |
| 315 | 1.2.1.6.3.3.2 | Elaborar Informe de Prueba | 1d | 2015-11-16 | 2015-11-16 | 0.88d |  | Roger | 8h |
| 316 | 1.2.1.6.3.3.3 | Traspaso de Informacion | 1d | 2015-11-16 | 2015-11-16 | 0.88d |  | Edwar | 8h |
| 317 | 1.2.1.6.3.4 | **Modulo de Seguridad** | 1d? | 2015-11-16 | 2015-11-16 | 0.88d |  | Edwar; Julio; Roger | 64h |
| 318 | 1.2.1.6.3.4.1 | Elaborar Pruebas de Modulo | 1d? | 2015-11-16 | 2015-11-16 | 0.88d |  | Edwar; Julio; Roger | 24h |
| 319 | 1.2.1.6.3.4.2 | Elaborar Informe de Prueba | 1d? | 2015-11-16 | 2015-11-16 | 0.88d |  | Roger | 8h |
| 320 | 1.2.1.6.3.4.3 | Traspaso de Informacion | 1d? | 2015-11-16 | 2015-11-16 | 0.88d |  | Edwar | 8h |
| 321 | 1.2.1.6.4 | Elaborar Matriz de Trazabilidad de Requerimientos Final | 1d | 2015-11-17 | 2015-11-17 | 2d | start no earlier than 2015-11-17 | Julio | 8h |
| 322 | 1.2.1.6.5 | Traspaso de Informacion | 1d | 2015-11-17 | 2015-11-17 | 2d | start no earlier than 2015-11-17 | Edwar | 8h |
| 323 | 1.2.1.7 | **Implementacion** | 2d | 2015-11-17 | 2015-11-18 |  |  | Edwar; Roger | 112h |
| 324 | 1.2.1.7.1 | **Guia de Usuario** | 1d | 2015-11-17 | 2015-11-17 |  |  | Edwar; Roger | 32h |
| 325 | 1.2.1.7.1.1 | Elaborar Guia de Instalacion de APK | 1d | 2015-11-17 | 2015-11-17 | 2d | start no earlier than 2015-11-17 | Edwar | 8h |
| 326 | 1.2.1.7.1.2 | Elaborar Guia de Usuario con todos los modulos actualizados | 1d | 2015-11-17 | 2015-11-17 | 2d | start no earlier than 2015-11-17 | Roger | 8h |
| 327 | 1.2.1.7.2 | **Preparacion de APK** | 1d | 2015-11-18 | 2015-11-18 |  |  | Edwar; Roger | 48h |
| 328 | 1.2.1.7.2.1 | Creacion del archivo APK de instalacion | 1d | 2015-11-18 | 2015-11-18 | 1d | start no earlier than 2015-11-18 | Edwar; Roger | 16h |
| 329 | 1.2.1.7.2.2 | Publicacion de la Aplicación en Plataforma Google Play | 1d | 2015-11-18 | 2015-11-18 | 1d | start no earlier than 2015-11-18 | Edwar; Roger | 16h |

| ID | WBS | Task | Duration | Start | Finish | Complete | Remaining | Total slack | Free slack | Resources | Work | Actual work |
| --- | --- | --- | --- | --- | --- | --- | --- | --- | --- | --- | --- | --- |
| 330 | 1.3 | **Reuniones Internas EJR-SOFT** | 54d | 2015-09-12 A | 2015-11-14 | 17% | 45d | 0d |  | Edwar; Julio; Roger | 1728h | 96h |
| 331 | 1.3.1 | **Reunion Quincenal 1** | 1d | 2015-09-12 A | 2015-09-12 A | 100% |  |  |  | Edwar; Julio; Roger | 72h | 72h |
| 332 | 1.3.1.1 | Elaborar Acta de Reunion | 1d | 2015-09-12 A | 2015-09-12 A | 100% |  |  |  | Edwar; Julio; Roger | 24h | 24h |
| 333 | 1.3.1.2 | Traspaso de Informacion | 1d | 2015-09-12 A | 2015-09-12 A | 100% |  |  |  | Edwar; Julio; Roger | 24h | 24h |
| 334 | 1.3.2 | **Reunion Quincenal 2** | 1d | 2015-09-26 | 2015-09-26 |  |  |  |  | Edwar; Julio; Roger | 72h |  |
| 335 | 1.3.2.1 | Elaborar Acta de Reunion | 1d | 2015-09-26 | 2015-09-26 |  |  | -0.12d | 0d | Edwar; Julio; Roger | 24h |  |
| 336 | 1.3.2.2 | Traspaso de Informacion | 1d | 2015-09-26 | 2015-09-26 |  |  | -0.12d | 0d | Edwar; Julio; Roger | 24h |  |
| 337 | 1.3.3 | **Reunion Quincenal 3** | 1d | 2015-10-10 | 2015-10-10 |  |  |  |  | Edwar; Julio; Roger | 72h |  |
| 338 | 1.3.3.1 | Elaborar Acta de Reunion | 1d | 2015-10-10 | 2015-10-10 |  |  | -0.12d | 0d | Edwar; Julio; Roger | 24h |  |
| 339 | 1.3.3.2 | Traspaso de Informacion | 1d | 2015-10-10 | 2015-10-10 |  |  | -0.12d | 0d | Edwar; Julio; Roger | 24h |  |
| 340 | 1.3.4 | **Reunion Quincenal 4** | 1d | 2015-10-24 | 2015-10-24 |  |  |  |  | Edwar; Julio; Roger | 72h |  |
| 341 | 1.3.4.1 | Elaborar Acta de Reunion | 1d | 2015-10-24 | 2015-10-24 |  |  | -0.12d | 0d | Edwar; Julio; Roger | 24h |  |
| 342 | 1.3.4.2 | Traspaso de Informacion | 1d | 2015-10-24 | 2015-10-24 |  |  | -0.12d | 0d | Edwar; Julio; Roger | 24h |  |
| 343 | 1.3.5 | **Reunion Quincenal 6** | 1d | 2015-11-07 | 2015-11-07 |  |  |  |  | Edwar; Julio; Roger | 72h |  |
| 344 | 1.3.5.1 | Elaborar Acta de Reunion | 1d | 2015-11-07 | 2015-11-07 |  |  | -0.12d | 0d | Edwar; Julio; Roger | 24h |  |
| 345 | 1.3.5.2 | Traspaso de Informacion | 1d | 2015-11-07 | 2015-11-07 |  |  | -0.12d | 0d | Edwar; Julio; Roger | 24h |  |
| 346 | 1.3.6 | **Reunion Final** | 1d | 2015-11-14 | 2015-11-14 |  |  |  |  | Edwar; Julio; Roger | 72h |  |
| 347 | 1.3.6.1 | Elaborar Acta de Reunion | 1d | 2015-11-14 | 2015-11-14 |  |  | -0.12d | 0d | Edwar; Julio; Roger | 24h |  |
| 348 | 1.3.6.2 | Traspaso de Informacion | 1d | 2015-11-14 | 2015-11-14 |  |  | -0.12d | 0d | Edwar; Julio; Roger | 24h |  |
| 349 | 1.4 | **Reuniones Externas EJR-SOFT - CLIENTE** | 48d | 2015-09-24 | 2015-11-19 |  |  |  |  | Edwar; Julio; Roger; Profesor | 1920h |  |
| 350 | 1.4.1 | **1 Presentacion del Proyecto** | 1d | 2015-09-24 | 2015-09-24 |  |  |  |  | Edwar; Julio; Roger; Profesor | 128h |  |
| 351 | 1.4.1.1 | Revision de Entregables de Area de Proceso PP-PMC | 1d | 2015-09-24 | 2015-09-24 |  |  | -0.12d | 0d | Edwar; Julio; Profesor; Roger | 32h |  |
| 352 | 1.4.1.2 | Acta de Reunion con acuerdos tomados | 1d | 2015-09-24 | 2015-09-24 |  |  | -0.12d | 0d | Edwar; Julio; Profesor; Roger | 32h |  |
| 353 | 1.4.1.3 | Traspaso de Informacion | 1d | 2015-09-24 | 2015-09-24 |  |  | -0.12d | 0d | Edwar; Julio; Profesor; Roger | 32h |  |

| ID | WBS | Task | Duration | Start | Finish | Total slack | Free slack | Resources | Work |
| --- | --- | --- | --- | --- | --- | --- | --- | --- | --- |
| 354 | 1.4.2 | **2 Presentacion del Proyecto** | 1d | 2015-10-22 | 2015-10-22 |  |  | Edwar; Julio; Roger; Profesor | 128h |
| 355 | 1.4.2.1 | Kick Off Meeting con Profesor | 1d | 2015-10-22 | 2015-10-22 | -0.12d | 0d | Edwar; Julio; Profesor; Roger | 32h |
| 356 | 1.4.2.2 | Acta de Reunion con acuerdos tomados | 1d | 2015-10-22 | 2015-10-22 | -0.12d | 0d | Edwar; Julio; Profesor; Roger | 32h |
| 357 | 1.4.2.3 | Traspaso de Informacion | 1d | 2015-10-22 | 2015-10-22 | -0.12d | 0d | Edwar; Julio; Profesor; Roger | 32h |
| 358 | 1.4.3 | **3 Presentacion del Proyecto** | 1d | 2015-11-19 | 2015-11-19 |  |  | Edwar; Julio; Roger; Profesor | 128h |
| 359 | 1.4.3.1 | Kick Off Meeting con Profesor | 1d | 2015-11-19 | 2015-11-19 | -0.12d | 0d | Edwar; Julio; Profesor; Roger | 32h |
| 360 | 1.4.3.2 | Acta de Reunion con acuerdos tomados | 1d | 2015-11-19 | 2015-11-19 | -0.12d | 0d | Edwar; Julio; Profesor; Roger | 32h |
| 361 | 1.4.3.3 | Traspaso de Informacion | 1d | 2015-11-19 | 2015-11-19 | -0.12d | 0d | Edwar; Julio; Profesor; Roger | 32h |
